# PRIMERA VERSIÓN_EDT_PM05

How a schedule from MS Project changed from version to version. A marks actual dates.

## Version 1 (saved 2011-04-14, file EDT_ACT_13.4_PM06.mpp)

| ID | WBS | Task | Duration | Start | Finish | Predecessors | Total float | Constraint |
| --- | --- | --- | --- | --- | --- | --- | --- | --- |
| 1 | 1 | **Análisis y Diseño de la Arquitectura de Procesos de una pequeña minería- Proceso de Logística** | 79d | 2011-03-28 | 2011-07-18 |  | 0d |  |
| 2 | 1.1 | **Inicio y Planificación** | 1d | 2011-03-28 | 2011-03-28 |  | 64.5d |  |
| 3 |  | Elaboración del Project Charter | 1d | 2011-03-28 | 2011-03-28 |  | 74d |  |
| 4 |  | Elaboración del Project Plan | 1d | 2011-03-28 | 2011-03-28 |  | 5d |  |
| 5 | 1.2 | **Elaboración de entregables** | 49d | 2011-03-29 | 2011-06-08 |  | 17d |  |
| 6 |  | Investigación Inicial | 3d | 2011-03-29 | 2011-03-31 | 4 | 59.5d |  |
| 7 |  | Elaboración de Cronograma | 1d | 2011-03-30 | 2011-03-30 | 6SS | 58.5d | start no earlier than 2011-03-30 |
| 8 |  | Elaboración de la Matriz de Riesgos | 2d | 2011-03-30 | 2011-03-31 | 7SS | 58.5d |  |
| 9 |  | Elaboración Capítulo Introductorio | 4d | 2011-04-01 | 2011-04-06 | 8 | 58.5d |  |
| 10 | 1.2.5 | **Creación de Artefactos Base** | 5.5d | 2011-04-04 | 2011-04-11 |  | 57.5d |  |
| 11 |  | Organigrama de la Empresa | 0.5d | 2011-04-04 | 2011-04-04 | 9SS | 57.5d | start no earlier than 2011-04-04 |
| 12 |  | Stakeholders Empresariales | 0.5d | 2011-04-04 | 2011-04-04 | 11 | 57.5d |  |
| 13 |  | Diagrama de Objetivos | 1d | 2011-04-04 | 2011-04-04 | 11SS | 57.5d |  |
| 14 |  | Mapa de Procesos | 0.5d | 2011-04-05 | 2011-04-05 | 13 | 67.5d |  |
| 15 |  | Justificación de Procesos - Objetivos | 1.5d | 2011-04-05 | 2011-04-06 | 12, 13 | 57.5d | start no earlier than 2011-04-05 |
| 16 |  | Integración de artefactos inciales | 3d | 2011-04-06 | 2011-04-11 | 15, 12 | 63.5d |  |
| 17 |  | Primer envío a QA | 0d | 2011-04-11 | 2011-04-11 |  | 64d | start no earlier than 2011-04-11 |
| 18 | 1.2.6 | **Diseño de Procesos** | 42.5d | 2011-04-06 | 2011-06-08 |  | 10.5d |  |
| 19 |  | Elaboración de la Memoria Parcial | 3d | 2011-04-06 | 2011-04-11 | 15 | 57.5d |  |
| 20 |  | Revisión de Memoria Parcial | 2d | 2011-04-12 | 2011-04-13 | 19 | 57d | finish no earlier than 2011-04-13 |
| 21 |  | Corección de Memoria Parcial | 3d | 2011-04-14 | 2011-04-18 | 20 | 57d |  |
| 22 |  | Entrega de Memoria Parcial | 0d | 2011-04-18 | 2011-04-18 | 21 | 57d | start no earlier than 2011-04-18 |
| 23 |  | Exposición Memoria Parcial | 1d | 2011-04-20 | 2011-04-20 | 22 | 56d | start no earlier than 2011-04-20 |
| 24 |  | Diagramación de Procesos de Primer Nivel | 2d | 2011-04-20 | 2011-04-25 |  | 0d | start no earlier than 2011-04-20 |
| 25 |  | Integración de Procesos de Primer Nivel | 5d | 2011-04-26 | 2011-05-02 | 24 | 0d |  |
| 26 |  | Segundo envio a QA | 0d | 2011-05-04 | 2011-05-04 |  | 49d | start no earlier than 2011-05-04 |
| 27 |  | Diagramación de Procesos de Segundo Nivel | 20d | 2011-05-03 | 2011-05-30 | 25 | 0d |  |
| 28 |  | Tercer envío a QA | 0d | 2011-06-08 | 2011-06-08 | 27 | 24d | start no earlier than 2011-06-08 |
| 29 | 1.3 | **Cierre de ciclo** | 35d | 2011-05-31 | 2011-07-18 |  | 0d |  |
| 30 | 1.3.1 | **Memoria Parcial** | 23d | 2011-05-31 | 2011-06-30 |  | 0d |  |
| 31 |  | Elaboración de la versión final de la M.P. | 12d | 2011-05-31 | 2011-06-15 | 27 | 0d |  |
| 32 |  | Revisión de la Memoria Parcial | 6d | 2011-06-16 | 2011-06-23 | 31 | 0d |  |
| 33 |  | Corección de Memoria Parcial | 5d | 2011-06-24 | 2011-06-30 | 32 | 0d |  |
| 34 |  | Entrega Memoria Parcial | 0d | 2011-06-30 | 2011-06-30 | 33 | 0d |  |
| 35 | 1.3.2 | **Presentación Final** | 12d | 2011-07-01 | 2011-07-18 |  | 0d |  |
| 36 |  | Preparación de la diapositiva final | 11d | 2011-07-01 | 2011-07-15 | 34 | 0d |  |
| 37 |  | Exposición | 1d | 2011-07-18 | 2011-07-18 | 36 | 0d | start no earlier than 2011-07-11 |

## Version 2 (saved 2011-04-16, file EDT_ACT_13.4_PM06.mpp)

Last finish stays 2011-07-18.

Added:

| ID | Task | Duration | Start | Finish | Constraint |
| --- | --- | --- | --- | --- | --- |
| 17 | Primera reunión con el cliente | 2h | 2011-04-08 | 2011-04-08 | finish no earlier than 2011-04-08 |
| 22 | Segunda reunión con el cliente | 0.5h | 2011-04-15 | 2011-04-15 | start no earlier than 2011-04-15 |

Changed:

| ID | Task | Start | Finish | Duration | Total float | Other |
| --- | --- | --- | --- | --- | --- | --- |
| 9 | Elaboración del primer capítulo |  |  |  |  | was named Elaboración Capítulo Introductorio |
| 21 | Primera Revisión de Memoria Parcial | 2011-04-12 → 2011-04-13 (+1d) | 2011-04-13 → 2011-04-14 (+1d) |  | 57d → 62d | was named Revisión de Memoria Parcial; constraint finish no earlier than 2011-04-13 → finish no earlier than 2011-04-14 |
| 23 | Corección de Memoria Parcial | 2011-04-14 → 2011-04-15 (+1d) |  | 3d → 2d | 57d → 62d |  |
| 33 | Elaboración de la versión final de la Memoria Parcial |  |  |  |  | was named Elaboración de la versión final de la M.P. |
| 34 | Segunda Revisión de la Memoria Parcial |  |  |  |  | was named Revisión de la Memoria Parcial |

## Version 3 (saved 2011-06-01, file EDT_ACT_01.06_PM06.mpp)

Last finish 2011-07-18 → 2011-07-11 (-7d). Complete tasks 0 → 25.

Added:

| ID | Task | Duration | Start | Finish | Predecessors | Constraint |
| --- | --- | --- | --- | --- | --- | --- |
| 28 | Primer ciclo QA | 1d | 2011-05-05 A | 2011-05-05 A |  |  |
| 29 | Segundo ciclo QA | 1d | 2011-05-18 A | 2011-05-18 A | 28 | start no earlier than 2011-05-18 |
| 30 | Tercer ciclo QA | 1d | 2011-05-23 A | 2011-05-23 A | 29 | start no earlier than 2011-05-23 |
| 32 | **Tercer envío a QA** | 17d | 2011-05-30 A | 2011-06-22 |  |  |
| 33 | **Entrega 1** | 1d | 2011-05-30 A | 2011-05-30 |  |  |
| 34 | Primer ciclo QA | 0d | 2011-05-30 A | 2011-05-30 A |  |  |
| 35 | Segundo ciclo QA | 0d | 2011-06-06 | 2011-06-06 | 34 | start no earlier than 2011-06-06 |
| 36 | Tercer ciclo QA | 0d | 2011-06-08 | 2011-06-08 | 35 | start no earlier than 2011-06-08 |
| 37 | **Entrega 2** | 1d | 2011-06-06 | 2011-06-06 | 33 |  |
| 38 | Primer ciclo QA | 0d | 2011-06-06 | 2011-06-06 |  | start no earlier than 2011-06-06 |
| 39 | Segundo ciclo QA | 0d | 2011-06-10 | 2011-06-10 | 38 | start no earlier than 2011-06-10 |
| 40 | Tercer ciclo QA | 0d | 2011-06-13 | 2011-06-13 | 39 | start no earlier than 2011-06-13 |
| 41 | **Entrega 3** | 1d | 2011-06-13 | 2011-06-13 | 37 |  |
| 42 | Primer ciclo QA | 0d | 2011-06-13 | 2011-06-13 |  |  |
| 43 | Segundo ciclo QA | 0d | 2011-06-17 | 2011-06-17 | 42 | start no earlier than 2011-06-17 |
| 44 | Tercer ciclo QA | 0d | 2011-06-20 | 2011-06-20 | 43 | start no earlier than 2011-06-20 |
| 45 | **Entrega 4** | 0d | 2011-06-17 | 2011-06-17 |  |  |
| 46 | Primer ciclo QA | 0d | 2011-06-17 | 2011-06-17 |  |  |
| 47 | Segundo ciclo QA | 0d | 2011-06-20 | 2011-06-20 |  | start no earlier than 2011-06-20 |
| 48 | Tercer ciclo QA | 0d | 2011-06-22 | 2011-06-22 |  | start no earlier than 2011-06-22 |

Removed: 30 Tercer envío a QA

Changed:

| ID | Task | Start | Finish | Duration | Complete | Total float | Predecessors | Other |
| --- | --- | --- | --- | --- | --- | --- | --- | --- |
| 1 | **Análisis y Diseño de la Arquitectura de Procesos de una pequeña minería- Proceso de Logística** | 2011-03-28 A | 2011-07-18 → 2011-07-11 (-7d) | 79d → 74d | 0% → 58% |  |  |  |
| 2 | **Inicio y Planificación** | 2011-03-28 A | 2011-03-28 A |  | 0% → 100% | 64.5d → none |  |  |
| 3 | Elaboración del Project Charter | 2011-03-28 A | 2011-03-28 A |  | 0% → 100% | 74d → none |  |  |
| 4 | Elaboración del Project Plan | 2011-03-28 A | 2011-03-28 A |  | 0% → 100% | 5d → none |  |  |
| 5 | **Elaboración de entregables** | 2011-03-29 A | 2011-06-08 → 2011-06-22 (+14d) | 49d → 59d | 0% → 74% | 16d → 14d |  |  |
| 6 | Investigación Inicial | 2011-03-29 A | 2011-03-31 A |  | 0% → 100% | 59.5d → none |  |  |
| 7 | Elaboración de Cronograma | 2011-03-30 A | 2011-03-30 A |  | 0% → 100% | 58.5d → none |  |  |
| 8 | Elaboración de la Matriz de Riesgos | 2011-03-30 A | 2011-03-31 A |  | 0% → 100% | 58.5d → none |  |  |
| 9 | Elaboración de los primeros dos capítulos | 2011-04-01 A | 2011-04-06 A |  | 0% → 100% | 58.5d → none |  | was named Elaboración del primer capítulo |
| 10 | **Creación de Artefactos Base** | 2011-04-04 A | 2011-04-11 A |  | 0% → 100% | 63.5d → none |  |  |
| 11 | Diagrama de la Organización | 2011-04-04 A | 2011-04-04 A |  | 0% → 100% | 57.5d → none |  | was named Organigrama de la Empresa |
| 12 | Stakeholders Empresariales | 2011-04-04 A | 2011-04-04 A |  | 0% → 100% | 57.5d → none |  |  |
| 13 | Diagrama de Objetivos | 2011-04-04 A | 2011-04-04 A |  | 0% → 100% | 57.5d → none |  |  |
| 14 | Mapa de Procesos | 2011-04-05 A | 2011-04-05 A |  | 0% → 100% | 67.5d → none |  |  |
| 15 | Justificación de Procesos - Objetivos | 2011-04-05 A | 2011-04-06 A |  | 0% → 100% | 57.5d → none |  |  |
| 16 | Integración de artefactos inciales | 2011-04-06 A | 2011-04-11 A |  | 0% → 100% | 63.5d → none |  |  |
| 17 | Primera reunión con el cliente | 2011-04-08 A | 2011-04-08 A |  | 0% → 100% | 69d → none |  |  |
| 18 | Primer envío a QA | 2011-04-11 A | 2011-04-11 A |  | 0% → 100% | 69d → none |  |  |
| 19 | **Diseño de Procesos** | 2011-04-06 A | 2011-06-08 → 2011-06-22 (+14d) | 42.5d → 52.5d | 0% → 64% | 9.5d → 14d |  |  |
| 20 | Elaboración de la Memoria Parcial | 2011-04-06 A | 2011-04-11 A |  | 0% → 100% | 63.5d → none |  |  |
| 21 | Primera Revisión de Memoria Parcial | 2011-04-13 A | 2011-04-14 A |  | 0% → 100% | 62d → none |  |  |
| 22 | Segunda reunión con el cliente | 2011-04-15 A | 2011-04-15 A |  | 0% → 100% | 64.94d → none |  |  |
| 23 | Corección de Memoria Parcial | 2011-04-15 A | 2011-04-18 A |  | 0% → 100% | 62d → none |  |  |
| 24 | Entrega de Memoria Parcial | 2011-04-18 A | 2011-04-18 A |  | 0% → 100% | 62d → none |  |  |
| 25 | Exposición Memoria Parcial | 2011-04-20 → 2011-04-25 A (+5d) | 2011-04-20 → 2011-04-25 A (+5d) |  | 0% → 100% | 61d → none |  | constraint start no earlier than 2011-04-20 → start no earlier than 2011-04-25 |
| 26 | Diagramación de Procesos de Primer Nivel | 2011-04-20 A | 2011-04-25 A |  | 0% → 100% | 0d → none |  |  |
| 27 | **Segundo envio a QA** | 2011-05-04 → 2011-05-05 A (+1d) | 2011-05-04 → 2011-05-05 (+1d) |  | 0% → 100% | 54d → none |  | constraint start no earlier than 2011-05-04 → none |
| 31 | Diagramación de Procesos de Segundo Nivel | 2011-05-03 A | 2011-05-30 → 2011-06-17 (+18d) | 20d → 34d | 0% → 50% | 0d → 16d | 49 → none | constraint none → finish no earlier than 2011-06-17 |
| 49 | Integración de Procesos de Primer Nivel | 2011-04-26 → 2011-06-17 (+52d) | 2011-05-02 → 2011-06-17 (+46d) | 5d → 0d |  | 0d → 10d | 26 → none | constraint none → start no earlier than 2011-06-17 |
| 50 | **Cierre de ciclo** | 2011-05-31 → 2011-06-17 (+17d) | 2011-07-18 → 2011-07-11 (-7d) | 35d → 17d |  |  |  |  |
| 51 | **Memoria Parcial** | 2011-05-31 → 2011-06-17 (+17d) | 2011-06-30 → 2011-06-27 (-3d) | 23d → 7d |  | 0d → 7d |  |  |
| 52 | Elaboración de la versión final de la Memoria Parcial | 2011-05-31 → 2011-06-17 (+17d) | 2011-06-15 → 2011-06-22 (+7d) | 12d → 4d |  | 0d → 10d | 31 → 49 | constraint none → finish no earlier than 2011-06-22 |
| 53 | Segunda Revisión de la Memoria Parcial | 2011-06-16 → 2011-06-22 (+6d) | 2011-06-23 → 2011-06-22 (-1d) | 6d → 0d |  | 0d → 10d |  | constraint none → start no earlier than 2011-06-22 |
| 54 | Corección de Memoria Parcial | 2011-06-24 → 2011-06-23 (-1d) | 2011-06-30 → 2011-06-27 (-3d) | 5d → 3d |  | 0d → 10d |  |  |
| 55 | Entrega Memoria Parcial | 2011-06-30 → 2011-06-27 (-3d) | 2011-06-30 → 2011-06-27 (-3d) |  |  | 0d → 1d | 54 → none | constraint none → start no earlier than 2011-06-27 |
| 56 | **Presentación Final** | 2011-07-01 → 2011-06-27 (-4d) | 2011-07-18 → 2011-07-11 (-7d) | 12d → 11d |  |  |  |  |
| 57 | Preparación de la diapositiva final | 2011-07-01 → 2011-06-27 (-4d) | 2011-07-15 → 2011-07-08 (-7d) | 11d → 10d |  | 0d → 1d |  | constraint none → start no earlier than 2011-06-27 |
| 58 | Exposición | 2011-07-18 → 2011-07-11 (-7d) | 2011-07-18 → 2011-07-11 (-7d) |  |  |  | 57 → none |  |

## Version 4 (saved 2011-06-08, file EDT_ACT_08.06_PM06.mpp)

Last finish stays 2011-07-11. Complete tasks 25 → 26.

Changed:

| ID | Task | Start | Finish | Complete | Total float | Other |
| --- | --- | --- | --- | --- | --- | --- |
| 1 | **Análisis y Diseño de la Arquitectura de Procesos de una pequeña minería- Proceso de Logística** |  |  | 58% → 71% |  |  |
| 5 | **Elaboración de entregables** |  |  | 74% → 89% |  |  |
| 19 | **Diseño de Procesos** |  |  | 64% → 86% |  |  |
| 27 | **Segundo envío a QA** |  |  |  |  | was named Segundo envio a QA |
| 31 | Diagramación de Procesos de Segundo Nivel |  |  | 50% → 80% |  |  |
| 35 | Segundo Ciclo QA |  |  |  |  | was named Segundo ciclo QA |
| 37 | **Entrega 2** | 2011-06-06 A |  |  |  |  |
| 38 | Primer ciclo QA | 2011-06-06 A | 2011-06-06 A | 0% → 100% | 24d → none |  |

## Version 5 (saved 2011-06-18, file EDT_ACT_08.06_PM06.mpp)

Last finish stays 2011-07-11. Complete tasks 26 → 37.

Changed:

| ID | Task | Start | Finish | Duration | Complete | Total float |
| --- | --- | --- | --- | --- | --- | --- |
| 1 | **Análisis y Diseño de la Arquitectura de Procesos de una pequeña minería- Proceso de Logística** |  |  |  | 71% → 76% |  |
| 5 | **Elaboración de entregables** |  |  | 59d → 60d | 89% → 91% | 14d → 13d |
| 19 | **Diseño de Procesos** |  |  | 52.5d → 53.5d | 86% → 89% | 14d → 13d |
| 32 | **Tercer envío a QA** |  | 2011-06-22 A | 17d → 18d | 0% → 100% | 14d → none |
| 33 | **Entrega 1** |  |  |  | 0% → 100% |  |
| 34 | Primer ciclo QA |  |  | 0d → 1d |  |  |
| 35 | Segundo Ciclo QA | 2011-06-06 A | 2011-06-06 A | 0d → 1d | 0% → 100% | 26d → none |
| 36 | Tercer ciclo QA | 2011-06-08 A | 2011-06-08 A | 0d → 1d | 0% → 100% | 24d → none |
| 37 | **Entrega 2** |  |  |  | 0% → 100% |  |
| 38 | Primer ciclo QA |  |  | 0d → 1d |  |  |
| 39 | Segundo ciclo QA | 2011-06-10 A | 2011-06-10 A | 0d → 1d | 0% → 100% | 22d → none |
| 40 | Tercer ciclo QA | 2011-06-13 A | 2011-06-13 A | 0d → 1d | 0% → 100% | 21d → none |
| 41 | **Entrega 3** | 2011-06-13 A |  |  | 0% → 100% |  |
| 42 | Primer ciclo QA | 2011-06-13 A | 2011-06-13 A | 0d → 1d | 0% → 100% | 1d → none |
| 43 | Segundo ciclo QA | 2011-06-17 A | 2011-06-17 A | 0d → 1d | 0% → 100% | 17d → none |
| 44 | Tercer ciclo QA | 2011-06-20 A | 2011-06-20 A | 0d → 1d | 0% → 100% | 16d → none |
| 45 | **Entrega 4** | 2011-06-17 A |  |  | 0% → 100% |  |
| 46 | Primer ciclo QA | 2011-06-17 A | 2011-06-17 A | 0d → 1d | 0% → 100% | 0d → none |
| 47 | Segundo ciclo QA | 2011-06-20 A | 2011-06-20 A | 0d → 1d | 0% → 100% | 16d → none |
| 48 | Tercer ciclo QA | 2011-06-22 A | 2011-06-22 A | 0d → 1d | 0% → 100% | 14d → none |
| 49 | Integración de Procesos de Primer Nivel | 2011-06-17 A | 2011-06-17 A | 0d → 1d | 0% → 100% | 10d → none |
| 50 | **Cierre de ciclo** | 2011-06-17 → 2011-06-20 A (+3d) |  | 17d → 16d | 0% → 10% |  |
| 51 | **Memoria Parcial** | 2011-06-17 → 2011-06-20 A (+3d) | 2011-06-27 → 2011-06-28 (+1d) |  | 0% → 26% | 7d → 9d |
| 52 | Elaboración de la versión final de la Memoria Parcial | 2011-06-17 → 2011-06-20 A (+3d) | 2011-06-22 → 2011-06-23 (+1d) |  | 0% → 45% | 10d → 9d |
| 53 | Segunda Revisión de la Memoria Parcial | 2011-06-22 → 2011-06-23 (+1d) | 2011-06-22 → 2011-06-23 (+1d) |  |  | 10d → 9d |
| 54 | Corección de Memoria Parcial | 2011-06-23 → 2011-06-24 (+1d) | 2011-06-27 → 2011-06-28 (+1d) |  |  | 10d → 9d |

## Version 6 (saved 2011-06-27, file EDT_ACT_17.06_PM06.mpp)

Last finish stays 2011-07-11. Complete tasks 37 → 41.

Changed:

| ID | Task | Start | Finish | Complete | Total float |
| --- | --- | --- | --- | --- | --- |
| 1 | **Análisis y Diseño de la Arquitectura de Procesos de una pequeña minería- Proceso de Logística** |  |  | 76% → 82% |  |
| 50 | **Cierre de ciclo** |  |  | 10% → 39% |  |
| 51 | **Memoria Parcial** |  | 2011-06-28 A | 26% → 100% | 9d → none |
| 52 | Elaboración de la versión final de la Memoria Parcial |  | 2011-06-23 A | 45% → 100% | 9d → none |
| 53 | Segunda Revisión de la Memoria Parcial | 2011-06-23 A | 2011-06-23 A | 0% → 100% | 9d → none |
| 54 | Corección de Memoria Parcial | 2011-06-24 A | 2011-06-28 A | 0% → 100% | 9d → none |
| 55 | Entrega Memoria Parcial | 2011-06-27 A | 2011-06-27 A | 0% → 100% | 1d → none |
